# Planeamento

Schedule from MS Project, 2016-02-03 to 2016-03-17, costs in €.

## Calendars

- QualificaIT: Mon 09:00-12:30; Tue 14:00-17:30; Wed 08:00-12:00, 13:00-17:00; Thu off; Fri 08:00-12:00, 13:00-17:00; Sat-Sun off. Exceptions (off unless hours are given): 2016-02-04 (Quintas-feiras), 2016-02-09 (Carnaval), 2016-02-11 (q), 2016-02-18 (q), 2016-02-25 (q).

## Resources

| Resource | Group | Rate |
| --- | --- | --- |
| GPI | GPI | 21.52 |
| ANI | ANI | 17.04 |
| CQI+AQI | CQI+AQI | 16.14 |
| CEI+ASI | PRI (CEI/ASI) | 11.66 |
| PRI | PRI (WEB) | 11.66 |

## Schedule

| ID | WBS | Task | Type | Duration | Start | Finish | Predecessors | Baseline start | Baseline finish | Baseline duration | Total slack | Free slack | Constraint | Deadline | Resources | Work | Cost | Baseline cost |
| --- | --- | --- | --- | --- | --- | --- | --- | --- | --- | --- | --- | --- | --- | --- | --- | --- | --- | --- |
| 1 | 1 | **Planeamento inicial do projecto** |  | 4.31d | 2016-02-03 | 2016-02-14 |  | 2016-02-03 | 2016-02-14 | 4.31d | 0.31d |  |  |  |  | 177.5h | 2,556.85 | 2,556.85 |
| 2 | 1.1 | Formação da Equipa |  | 0.5d | 2016-02-03 | 2016-02-03 |  | 2016-02-03 | 2016-02-03 | 0.5d | 0.31d | 0d | start no earlier than 2016-02-03 |  |  |  |  |  |
| 3 | 1.2 | Reunião de kick-off |  | 0.5d | 2016-02-03 | 2016-02-05 | 2 | 2016-02-03 | 2016-02-05 | 0.5d | 0.31d | 0d |  |  | ANI [200%]; CEI+ASI; CQI+AQI; GPI; PRI [500%] | 36h | 520.16 | 520.16 |
| 4 | 1.3 | Definição do projeto |  | 2d | 2016-02-05 | 2016-02-10 | 3 | 2016-02-05 | 2016-02-10 | 2d | 0.31d | 0d |  | 2016-02-14 | ANI [200%]; CEI+ASI; CQI+AQI; GPI; PRI [500%] | 138.5h | 1,988.27 | 1,988.27 |
| 5 | 1.4 | Controlo de qualidade |  | 2d | 2016-02-08 | 2016-02-12 | 4SS+1d | 2016-02-08 | 2016-02-12 | 2d | 19.33d |  |  |  | CQI+AQI [10%] | 3h | 48.42 | 48.42 |
| 6 | 1.5 | M1: Entrega do Planeamento do Projecto | milestone, manual | 0d | 2016-02-14 | 2016-02-14 |  | 2016-02-14 | 2016-02-14 | 0d |  |  |  |  | GPI [10%] |  |  |  |
| 7 | 2 | **Levantamento de Requisitos** |  | 8d | 2016-02-10 | 2016-02-29 |  | 2016-02-10 | 2016-02-29 | 8d | 0.31d |  |  |  |  | 153.71h | 2,604.81 | 2,604.81 |
| 8 | 2.1 | Levantamento, análise de requisitos e modelação |  | 7d | 2016-02-10 | 2016-02-26 | 4FS-4h | 2016-02-10 | 2016-02-26 | 7d | 0.31d | 0d |  | 2016-02-28 | GPI [20%]; ANI [200%]; CEI+ASI [20%]; CQI+AQI [10%] | 114.71h | 1,975.35 | 1,975.35 |
| 9 | 2.2 | Controlo de qualidade |  | 7d | 2016-02-12 | 2016-02-29 | 8SS+1d | 2016-02-12 | 2016-02-29 | 7d | 12.83d |  | finish no earlier than 2016-02-05 |  | CQI+AQI | 39h | 629.46 | 629.46 |
| 10 | 2.3 | M2: Requisitos e Modelação | milestone, manual | 0d | 2016-02-28 | 2016-02-28 |  | 2016-02-28 | 2016-02-28 | 0d |  |  |  |  | GPI [10%] |  |  |  |
| 11 | 3 | **Execução** |  | 15d | 2016-02-19 | 2016-03-14 |  | 2016-02-19 | 2016-03-14 | 15d | 0.31d |  |  |  |  | 786.09h | 10,431.81 | 10,431.81 |
| 12 | 3.1 | Definição da Arquitectura e Protótipo |  | 5d | 2016-02-19 | 2016-03-01 | 8FS-3d | 2016-02-19 | 2016-03-01 | 5d | 0.31d | 0d |  | 2016-03-03 | GPI [20%]; CEI+ASI; ANI; PRI [400%] | 165.5h | 2,097.38 | 2,097.38 |
| 13 | 3.2 | Controlo de qualidade |  | 5d | 2016-02-22 | 2016-03-02 | 12SS+1d | 2016-02-22 | 2016-03-02 | 5d | 10.83d |  |  |  | CQI+AQI | 20h | 322.8 | 322.8 |
| 14 | 3.3 | M3a: Arquitectura e Protótipo - Entrega de Protótipo | milestone, manual | 0d | 2016-03-03 | 2016-03-03 |  | 2016-03-03 | 2016-03-03 | 0d |  |  | as late as possible |  | GPI [10%]; CEI+ASI [20%] |  |  |  |
| 15 | 3.4 | M3b: Arquitectura e Protótipo - Entrega da Documentação | milestone, manual | 0d | 2016-03-06 | 2016-03-06 |  | 2016-03-06 | 2016-03-06 | 0d |  |  | as late as possible |  | GPI [10%] |  |  |  |
| 16 | 3.5 | Construção da solução |  | 11d | 2016-02-26 | 2016-03-11 | 12FS-2d | 2016-02-26 | 2016-03-11 | 11d | 0.31d | 0d |  | 2016-03-13 | GPI [20%]; CEI+ASI; ANI; PRI [400%] | 517.93h | 6,686.08 | 6,686.08 |
| 17 | 3.6 | Controlo de qualidade |  | 11d | 2016-02-29 | 2016-03-14 | 16SS+1d | 2016-02-29 | 2016-03-14 | 11d | 1.83d |  | finish no earlier than 2016-02-05 |  | CQI+AQI | 69.06h | 1,114.64 | 1,114.64 |
| 18 | 3.7 | M4a: Documentação final | milestone, manual | 0d | 2016-03-13 | 2016-03-13 |  | 2016-03-13 | 2016-03-13 | 0d |  |  | as late as possible |  | GPI [20%] |  |  |  |
| 19 | 3.8 | Testes de Aceitação |  | 1d | 2016-03-11 | 2016-03-14 | 16 | 2016-03-11 | 2016-03-14 | 1d | 0.83d | 0d |  |  | CQI+AQI; GPI [10%]; CEI+ASI [20%]; ANI [20%]; PRI [20%] | 13.6h | 210.91 | 210.91 |
| 20 | 4 | **Encerramento** |  | 1.83d | 2016-03-14 | 2016-03-17 |  | 2016-03-14 | 2016-03-17 | 1.83d | 0d |  |  |  |  | 34.5h | 534.95 | 534.95 |
| 21 | 4.1 | Entrega do produto |  | 1d | 2016-03-14 | 2016-03-16 | 19 | 2016-03-14 | 2016-03-16 | 1d | 0.83d |  |  | 2016-03-16 | GPI; PRI; CEI+ASI; ANI | 34.5h | 534.95 | 534.95 |
| 22 | 4.2 | M4b: Apresentação pública | milestone, manual | 0d | 2016-03-17 | 2016-03-17 |  | 2016-03-17 | 2016-03-17 | 0d |  |  | as late as possible |  | ANI [200%]; CEI+ASI; CQI+AQI; GPI; PRI [400%] |  |  |  |

Notes:
- 1: Estudo do Project Charter (enunciado) / Identificação e Gestão de Riscos / Definição da Estratégia de Gestão do Projecto / Planeamento Geral do Tempo e Recursos
- 2: Definição dos papéis e responsabilidades / Identificação das competências necessárias / Identificação dos recursos humanos necessários / Atribuição de papéis aos recursos
- 3: Definição das regras de funcionamento da equipa / Identificação de riscos associados com experiência anterior e competências técnicas / Seleção de ferramentas de produtividade, gestão, controlo e backup
- 4: Definição do âmbito inicial e objetivos do projecto / Identificação dos stakeholders / Identificação dos deriverables / Identificação de restrições e pressupostos / Avaliação de riscos e estratégias de deteção, prevenção e mitigação / Elaboração da WBS e PBS
- 6: - M1 (semana 18): planeamento do projecto / 10% da nota final / documentação: 14/Fev, 23h55, Moodle* (template apresentado nas sessões de gestão de projectos)
- 10: - M2 (semana 20): requisitos e modelação / 20% da nota final / documentação: 28/Fev, 23h55, Moodle* (template RUP)
- 14: M3 (semana 21): arquitectura e protótipo/ 30% da nota final / protótipo: 3/Mar / documentação: 6/Mar, 23h55, Moodle* (template RUP)
- 15: M3 (semana 21): arquitectura e protótipo/ 30% da nota final / protótipo: 3/Mar / documentação: 6/Mar, 23h55, Moodle* (template RUP)
- 18: - M4 (semanas 22 e 23): solução e documentação finais/ 40% da nota final / documentação: 13/Mar, 23h55, Moodle* (template RUP) / apresentação pública: 17/Mar
- 22: - M4 (semanas 22 e 23): solução e documentação finais/ 40% da nota final / documentação: 13/Mar, 23h55, Moodle* (template RUP) / apresentação pública: 17/Mar
